# 校准系统_第一阶段_进度计划

How a schedule from MS Project changed from version to version. A marks actual dates.

## Version 1 (saved 2020-06-05)

Note of the change: asd

| ID | WBS | Task | Duration | Start | Finish | Predecessors | Total float | Constraint |
| --- | --- | --- | --- | --- | --- | --- | --- | --- |
| 2 | 1 | **总体设计文档编写** | 9d | 2020-06-08 | 2020-06-18 |  | 0d |  |
| 3 | 1.1 | **核心业务部分设计文档** | 5d | 2020-06-08 | 2020-06-12 |  | 4d |  |
| 4 |  | 日志模块设计文档 | 1d | 2020-06-08 | 2020-06-08 |  | 5d | start no earlier than 2020-06-08 |
| 5 |  | 序列号管理设计文档 | 1d | 2020-06-09 | 2020-06-09 | 4 | 5d | start no earlier than 2020-06-09 |
| 6 |  | 模块自识别、硬件调试子业务设计文档 | 1d | 2020-06-10 | 2020-06-10 | 5 | 5d | start no earlier than 2020-06-10 |
| 7 |  | 校准命令、标准结果返回命令规范文档 | 1d | 2020-06-11 | 2020-06-11 | 6 | 5d | start no earlier than 2020-06-11 |
| 8 |  | 用户管理设计文档 | 1d | 2020-06-12 | 2020-06-12 |  | 4d | start no earlier than 2020-06-12 |
| 9 |  | 校准、采集子业务设计文档 | 1d | 2020-06-08 | 2020-06-08 |  | 4d | start no earlier than 2020-06-08 |
| 10 |  | 结果判定子业务设计文档 | 1d | 2020-06-09 | 2020-06-09 | 9 | 4d | start no earlier than 2020-06-09 |
| 11 |  | 协议对接业务设计文档 | 1d | 2020-06-10 | 2020-06-10 | 10 | 4d | start no earlier than 2020-06-10 |
| 12 |  | 标准源控制、参数管理子业务设计文档 | 1d | 2020-06-11 | 2020-06-11 | 11 | 4d | start no earlier than 2020-06-11 |
| 13 |  | 界面逻辑、通讯业务设计文档 | 1d | 2020-06-12 | 2020-06-12 | 12 | 4d | start no earlier than 2020-06-12 |
| 14 | 1.2 | **设计文档完善与确认** | 4d | 2020-06-15 | 2020-06-18 |  | 0d |  |
| 15 |  | 非功能特性说明编写 | 1d | 2020-06-15 | 2020-06-15 |  | 0d | start no earlier than 2020-06-15 |
| 16 |  | 总体约束说明编写 | 1d | 2020-06-16 | 2020-06-16 | 15 | 0d | start no earlier than 2020-06-16 |
| 17 |  | 文档检查与修改 | 1d | 2020-06-17 | 2020-06-17 | 16 | 0d | start no earlier than 2020-06-17 |
| 18 |  | 总体设计文档完善与归档 | 1d | 2020-06-18 | 2020-06-18 | 17 | 0d | start no earlier than 2020-06-18 |
| 20 | 2 | **UI界面** | 4d | 2020-06-15 | 2020-06-18 |  | 0d |  |
| 21 |  | 主界面原型开发与设计 | 1d | 2020-06-15 | 2020-06-15 |  | 0d | start no earlier than 2020-06-15 |
| 22 |  | 用户登陆与管理界面开发 | 1d | 2020-06-16 | 2020-06-16 | 21 | 0d | start no earlier than 2020-06-16 |
| 23 |  | 校准操作界面、状态显示界面开发 | 1d | 2020-06-17 | 2020-06-17 | 22 | 0d | start no earlier than 2020-06-17 |
| 24 |  | 日志管理界面设计与开发 | 1d | 2020-06-18 | 2020-06-18 | 23 | 0d | start no earlier than 2020-06-18 |

## Version 2 (saved 2020-06-08)

Note of the change: adb

Last finish 2020-06-18 → 2020-06-19 (+1d).

Added:

| ID | Task | Duration | Start | Finish | Predecessors | Constraint | Resources |
| --- | --- | --- | --- | --- | --- | --- | --- |
| 22 | **核心业务软件开发** | 5d | 2020-06-15 | 2020-06-19 |  |  |  |
| 23 | 串口通讯 | 1d | 2020-06-15 | 2020-06-15 |  | start no earlier than 2020-06-15 | 罗志勇 |
| 24 | 标准源控制 | 1d | 2020-06-16 | 2020-06-16 | 23 | start no earlier than 2020-06-16 | 罗志勇 |
| 25 | 模块自识别 | 1d | 2020-06-17 | 2020-06-17 | 24 |  | 罗志勇 |
| 26 | 校准业务 | 1d | 2020-06-18 | 2020-06-18 | 25 |  | 罗志勇 |
| 27 | 数据采集 | 1d | 2020-06-19 | 2020-06-19 | 26 |  | 罗志勇 |

Removed: 5 序列号管理设计文档; 6 模块自识别、硬件调试子业务设计文档; 8 用户管理设计文档; 24 日志管理界面设计与开发

Changed:

| ID | Task | Start | Finish | Duration | Total float | Predecessors | Other |
| --- | --- | --- | --- | --- | --- | --- | --- |
| 4 | 日志、序列号管理部分设计文档 |  |  |  | 5d → 8d |  | was named 日志模块设计文档 |
| 5 | 校准命令、标准结果返回命令规范文档 | 2020-06-11 → 2020-06-09 (-2d) | 2020-06-11 → 2020-06-09 (-2d) |  | 5d → 8d | 模块自识别、硬件调试子业务设计文档 → 4 | constraint start no earlier than 2020-06-11 → start no earlier than 2020-06-09 |
| 6 | 模块自识别、校准子业务设计文档 |  |  |  | 4d → 5d |  | was named 校准、采集子业务设计文档 |
| 7 | 数据采集、结果判定子业务设计文档 |  |  |  | 4d → 5d |  | was named 结果判定子业务设计文档 |
| 8 | 硬件调试、协议对接业务设计文档 |  |  |  | 4d → 5d |  | was named 协议对接业务设计文档 |
| 10 | 用户管理、通讯业务设计文档 |  |  |  | 4d → 5d |  | was named 界面逻辑、通讯业务设计文档 |
| 17 | **UI界面设计开发** | 2020-06-15 → 2020-06-10 (-5d) | 2020-06-18 → 2020-06-12 (-6d) | 4d → 3d | 0d → 5d |  | was named UI界面 |
| 18 | 主界面原型开发与设计 | 2020-06-15 → 2020-06-10 (-5d) | 2020-06-15 → 2020-06-10 (-5d) |  | 0d → 6d |  | constraint start no earlier than 2020-06-15 → start no earlier than 2020-06-10 |
| 19 | 校准操作界面、状态显示界面开发 | 2020-06-17 → 2020-06-11 (-6d) | 2020-06-17 → 2020-06-11 (-6d) |  | 0d → 6d | 20 → 18 | constraint start no earlier than 2020-06-17 → start no earlier than 2020-06-11 |
| 20 | 日志、用户管理界面开发 | 2020-06-16 → 2020-06-12 (-4d) | 2020-06-16 → 2020-06-12 (-4d) |  | 0d → 5d |  | was named 用户登陆与管理界面开发; constraint start no earlier than 2020-06-16 → start no earlier than 2020-06-12 |

## Version 3 (saved 2020-06-08)

Note of the change: Merge branch 'master' into pmd

Last finish stays 2020-06-19.

Changed:

| ID | Task | Other |
| --- | --- | --- |
| 23 | 串口、Modbus通讯 | was named 串口通讯 |
| 27 | 执行板数据采集 | was named 数据采集 |

## Version 4 (saved 2020-06-08)

Last finish 2020-06-19 → 2020-07-30 (+41d).

Added:

| ID | Task | Duration | Start | Finish | Predecessors | Constraint |
| --- | --- | --- | --- | --- | --- | --- |
| 4 | 校准命令、校准结果返回命令规范文档 | 1d | 2020-06-10 | 2020-06-10 | 3 |  |
| 5 | 与执行板通讯接口确认 | 1d | 2020-06-11 | 2020-06-11 | 4 |  |
| 6 | 核心业务设计文档 | 3d | 2020-06-08 | 2020-06-10 |  | start no earlier than 2020-06-08 |
| 7 | 文档完善 | 2d | 2020-06-11 | 2020-06-12 | 6 |  |
| 9 | **软件原型设计与关键技术** | 5d | 2020-06-15 | 2020-06-19 |  |  |
| 14 | **关键技术验证** | 2d | 2020-06-18 | 2020-06-19 |  |  |
| 15 | 标准源控制 | 1d | 2020-06-18 | 2020-06-18 |  | start no earlier than 2020-06-18 |
| 16 | 其它关键技术 | 1d | 2020-06-19 | 2020-06-19 | 15 |  |
| 18 | **执行板单片机软件修改** | 5d | 2020-06-15 | 2020-06-19 |  |  |
| 19 | 模块自识别功能 | 1d | 2020-06-15 | 2020-06-15 |  | start no earlier than 2020-06-15 |
| 20 | 执行板校准改进 | 2d | 2020-06-16 | 2020-06-17 | 19 |  |
| 21 | 执行板校准启动、结束命令统一 | 1d | 2020-06-18 | 2020-06-18 | 20 |  |
| 22 | 执行板序列号功能 | 1d | 2020-06-19 | 2020-06-19 | 21 |  |
| 24 | **软件开发** | 18d | 2020-06-18 | 2020-07-13 |  |  |
| 25 | **协议对接模块** | 4d | 2020-06-18 | 2020-06-23 |  |  |
| 28 | 执行板数据读取、解析 | 1d | 2020-06-22 | 2020-06-22 | 27 |  |
| 29 | 执行板开关控制 | 1d | 2020-06-23 | 2020-06-23 | 28 |  |
| 33 | 数据采集 | 1d | 2020-06-26 | 2020-06-26 | 32 |  |
| 34 | 结果判定 | 1d | 2020-06-29 | 2020-06-29 | 33 |  |
| 35 | 硬件调试 | 1d | 2020-06-30 | 2020-06-30 | 34 |  |
| 36 | **序列号管理** | 2d | 2020-07-01 | 2020-07-02 | 30 |  |
| 37 | 序列号创建、验证 | 1d | 2020-07-01 | 2020-07-01 |  |  |
| 38 | 序列号保存及功能完善 | 1d | 2020-07-02 | 2020-07-02 | 37 |  |
| 39 | **日志管理** | 7d | 2020-07-03 | 2020-07-13 | 36 |  |
| 40 | **数据库** | 3d | 2020-07-03 | 2020-07-07 |  |  |
| 41 | 设计和初始化 | 1d | 2020-07-03 | 2020-07-03 |  |  |
| 42 | 通用操作 | 1d | 2020-07-06 | 2020-07-06 | 41 |  |
| 43 | 显示模型设计 | 1d | 2020-07-07 | 2020-07-07 | 42 |  |
| 44 | 日期导航 | 1d | 2020-07-08 | 2020-07-08 | 40 |  |
| 45 | 功能操作 | 1d | 2020-07-09 | 2020-07-09 | 44 |  |
| 46 | 查询功能 | 1d | 2020-07-10 | 2020-07-10 | 45 |  |
| 47 | 导出EXCEL | 1d | 2020-07-13 | 2020-07-13 | 46 |  |
| 48 | **用户管理** | 3d | 2020-07-03 | 2020-07-07 | 36 |  |
| 49 | 用户表数据库表功能完善 | 1d | 2020-07-03 | 2020-07-03 |  |  |
| 50 | 用户常规管理功能 | 1d | 2020-07-06 | 2020-07-06 | 49 |  |
| 51 | 用户权限控制功能 | 1d | 2020-07-07 | 2020-07-07 | 50 |  |
| 52 | **参数管理** | 2d | 2020-07-08 | 2020-07-09 | 48 |  |
| 53 | 配置文件操作 | 1d | 2020-07-08 | 2020-07-08 |  |  |
| 54 | 参数管理功能完善 | 1d | 2020-07-09 | 2020-07-09 | 53 |  |
| 56 | **系统联调** | 5d | 2020-07-14 | 2020-07-20 | 24 |  |
| 57 | 校准业务联调 | 2d | 2020-07-14 | 2020-07-15 |  |  |
| 58 | 数据采集联调 | 2d | 2020-07-16 | 2020-07-17 | 57 |  |
| 59 | 序列号业务联调 | 1d | 2020-07-20 | 2020-07-20 | 58 |  |
| 61 | **系统测试** | 13d | 2020-07-14 | 2020-07-30 |  |  |
| 62 | **测试用例编写** | 8d | 2020-07-14 | 2020-07-23 | 24 |  |
| 63 | 核心业务测试用例 | 2d | 2020-07-14 | 2020-07-15 |  | start no earlier than 2020-06-18 |
| 64 | 序列号管理测试用例 | 2d | 2020-07-16 | 2020-07-17 | 63 |  |
| 65 | 日志管理 | 2d | 2020-07-20 | 2020-07-21 | 64 |  |
| 66 | 用户管理测试用例 | 2d | 2020-07-22 | 2020-07-23 | 65 |  |
| 67 | 功能测试 | 5d | 2020-07-24 | 2020-07-30 | 62 |  |
| 69 | **项目文档完善** | 5d | 2020-07-14 | 2020-07-20 |  |  |
| 70 | 设计文档修改 | 2d | 2020-07-14 | 2020-07-15 | 24 |  |
| 71 | 操作说明文档 | 2d | 2020-07-16 | 2020-07-17 | 70 |  |
| 72 | 其它文档补充 | 1d | 2020-07-20 | 2020-07-20 | 71 |  |
| 74 | **项目交付** | 5d | 2020-07-24 | 2020-07-30 |  |  |
| 75 | 软件BUG解决 | 3d | 2020-07-24 | 2020-07-28 | 62 |  |
| 76 | 软件交付 | 2d | 2020-07-29 | 2020-07-30 | 75 |  |

Removed: 3 核心业务部分设计文档; 5 校准命令、标准结果返回命令规范文档; 6 模块自识别、校准子业务设计文档; 7 数据采集、结果判定子业务设计文档; 8 硬件调试、协议对接业务设计文档; 9 标准源控制、参数管理子业务设计文档; 10 用户管理、通讯业务设计文档; 11 设计文档完善与确认; 12 非功能特性说明编写; 13 总体约束说明编写; 14 文档检查与修改; 15 总体设计文档完善与归档; 27 执行板数据采集

Changed:

| ID | Task | Start | Finish | Duration | Total float | Predecessors | Other |
| --- | --- | --- | --- | --- | --- | --- | --- |
| 2 | **总体设计文档编写** |  | 2020-06-18 → 2020-06-12 (-6d) | 9d → 5d | 1d → 34d |  |  |
| 3 | 日志、序列号管理部分设计文档 | 2020-06-08 → 2020-06-09 (+1d) | 2020-06-08 → 2020-06-09 (+1d) |  | 8d → 35d |  | constraint start no earlier than 2020-06-08 → start no earlier than 2020-06-09; resources 罗志勇 → none |
| 10 | **UI界面设计开发** | 2020-06-10 → 2020-06-15 (+5d) | 2020-06-12 → 2020-06-17 (+5d) |  | 5d → 0d |  |  |
| 11 | 主界面原型开发与设计 | 2020-06-10 → 2020-06-15 (+5d) | 2020-06-10 → 2020-06-15 (+5d) |  | 6d → 0d |  | constraint start no earlier than 2020-06-10 → start no earlier than 2020-06-15; resources 罗志勇 → none |
| 12 | 校准操作界面、状态显示界面开发 | 2020-06-11 → 2020-06-16 (+5d) | 2020-06-11 → 2020-06-16 (+5d) |  | 6d → 0d |  | resources 罗志勇 → none |
| 13 | 日志、用户管理界面开发 | 2020-06-12 → 2020-06-17 (+5d) | 2020-06-12 → 2020-06-17 (+5d) |  | 5d → 0d | 11 → 12 | constraint start no earlier than 2020-06-12 → start no earlier than 2020-06-15; resources 罗志勇 → none |
| 26 | 串口、Modbus通讯 | 2020-06-15 → 2020-06-18 (+3d) | 2020-06-15 → 2020-06-18 (+3d) |  |  | none → 10 | resources 罗志勇 → none |
| 27 | 标准源控制 | 2020-06-16 → 2020-06-19 (+3d) | 2020-06-16 → 2020-06-19 (+3d) |  |  |  | resources 罗志勇 → none |
| 30 | **核心业务软件开发** | 2020-06-15 → 2020-06-24 (+9d) | 2020-06-19 → 2020-06-30 (+11d) |  |  |  |  |
| 31 | 模块自识别 | 2020-06-17 → 2020-06-24 (+7d) | 2020-06-17 → 2020-06-24 (+7d) |  |  | 27 → 25 | resources 罗志勇 → none |
| 32 | 校准业务 | 2020-06-18 → 2020-06-25 (+7d) | 2020-06-18 → 2020-06-25 (+7d) |  |  |  | resources 罗志勇 → none |
